# FoodiesProjectPlanV1.1

Schedule from MS Project, 2019-04-01 to 2019-05-18, 7 hours a day, costs in ج.م.‏, A marks actual dates.

## Calendars

- Standard: Mon-Fri 08:00-12:00, 13:00-17:00; Sat-Sun off.

## Resources

| Resource | Rate |
| --- | --- |
| Aya Hamdy (PM) | 100 |
| Hossam (Dev. Team) | 100 |
| Dina (Dev. Team) | 100 |
| Maryam M. (Dev. Team) | 100 |
| Mariam N. (Dev. Team) | 100 |
| Marwa (Dev. Team) | 100 |
| Labtops |  |
| Software Tools |  |

## Schedule

| ID | WBS | Task | Type | Duration | Start | Finish | Predecessors | Complete | Remaining | Actual start | Baseline start | Baseline finish | Baseline duration | Total slack | Free slack | Resources | Work | Actual work | Cost | Baseline cost | Actual cost |
| --- | --- | --- | --- | --- | --- | --- | --- | --- | --- | --- | --- | --- | --- | --- | --- | --- | --- | --- | --- | --- | --- |
| 1 | 1 | **Foodies** |  | 19.43d | 2019-04-27 | 2019-05-18 |  | 49% | 9.95d | 2019-04-01 | 2019-04-27 | 2019-05-18 | 18.29d |  |  | Aya Hamdy (PM); Dina (Dev. Team); Hossam (Dev. Team); Mariam N. (Dev. Team); Marwa (Dev. Team); Maryam M. (Dev. Team); Labtops; Software Tools | 635.8h | 380.8h | 63,580 | 173,325.11 | 38,080 |
| 2 | 1.1 | **Initiation** |  | 1d | 2019-04-27 A | 2019-04-27 A |  | 100% |  |  | 2019-04-27 | 2019-04-27 | 1d |  |  | Aya Hamdy (PM); Dina (Dev. Team); Hossam (Dev. Team); Marwa (Dev. Team); Maryam M. (Dev. Team) | 77h | 77h | 7,700 | 11,550 | 7,700 |
| 3 | 1.1.1 | Gather requirements | manual | 1d | 2019-04-27 A | 2019-04-27 A |  | 100% |  |  | 2019-04-27 | 2019-04-27 | 1d |  |  | Aya Hamdy (PM); Dina (Dev. Team); Hossam (Dev. Team); Mariam N. (Dev. Team); Marwa (Dev. Team); Maryam M. (Dev. Team) | 42h | 42h | 4,200 | 6,300 | 4,200 |
| 4 | 1.1.2 | SIQ | milestone | 0d | 2019-04-27 A | 2019-04-27 A | 3 | 100% |  |  | 2019-04-27 | 2019-04-27 |  |  |  | Hossam (Dev. Team); Marwa (Dev. Team) |  |  |  |  |  |
| 5 | 1.2 | **Initial planning** |  | 5.71d | 2019-04-28 | 2019-05-02 | 3, 2 | 57% | 2.45d | 2019-04-01 | 2019-04-28 | 2019-05-01 | 4.57d |  |  | Aya Hamdy (PM); Dina (Dev. Team); Hossam (Dev. Team); Marwa (Dev. Team); Maryam M. (Dev. Team) | 263h | 76.65h | 26,300 | 27,150 | 7,665 |
| 6 | 1.2.1 | **Project Plan** |  | 0d | 2019-04-01 | 2019-04-01 |  | 33% | 0d | 2019-04-28 | 2019-04-28 | 2019-04-29 | 1d |  |  | Maryam M. (Dev. Team) | 21h | 6.3h | 2,100 | 1,050 | 630 |
| 7 | 1.2.1.1 | Project Description | milestone, manual | 0d | 2019-04-28 A | 2019-04-28 A |  | 100% |  |  | 2019-04-28 | 2019-04-28 |  |  |  | Aya Hamdy (PM) |  |  |  |  |  |
| 8 | 1.2.1.2 | Objective | milestone | 0d | 2019-04-28 A | 2019-04-28 A | 7 | 100% |  |  | 2019-04-28 | 2019-04-28 |  |  |  | Aya Hamdy (PM); Maryam M. (Dev. Team) |  |  |  |  |  |
| 9 | 1.2.1.3 | Scope |  | 1d | 2019-04-28 A | 2019-04-29 | 8 | 25% | 0.75d |  | 2019-04-28 | 2019-04-29 | 1d | 0d |  | Dina (Dev. Team); Maryam M. (Dev. Team) | 14h | 3.5h | 1,400 |  | 350 |
| 10 | 1.2.1.4 | Development approach | milestone | 0d | 2019-04-28 A | 2019-04-29 A | 9 | 100% |  |  | 2019-04-28 | 2019-04-28 |  |  |  | Aya Hamdy (PM); Dina (Dev. Team); Hossam (Dev. Team); Labtops; Mariam N. (Dev. Team); Marwa (Dev. Team); Maryam M. (Dev. Team) |  |  |  |  |  |
| 11 | 1.2.1.5 | Software Tools |  | 1d | 2019-04-28 A | 2019-04-30 | 10 | 40% | 0.6d |  | 2019-04-28 | 2019-04-29 | 1d | -0.6d | 0d | Maryam M. (Dev. Team) | 7h | 2.8h | 700 |  | 280 |
| 12 | 1.2.2 | Project schedule | manual | 1d | 2019-04-29 A | 2019-04-30 | 6 | 50% | 0.5d |  | 2019-04-29 | 2019-04-30 | 1d |  |  | Aya Hamdy (PM); Labtops; Software Tools | 7h | 3.5h | 700 | 1,050 | 350 |
| 13 | 1.2.3 | Project risk | manual | 1d | 2019-04-30 | 2019-04-30 | 6 |  |  |  | 2019-04-29 | 2019-04-30 | 1d |  |  | Marwa (Dev. Team); Labtops | 7h |  | 700 | 1,050 |  |
| 14 | 1.2.4 | Test plan | manual | 2d | 2019-04-29 A | 2019-05-01 | 9 | 95% | 0.1d |  |  |  |  |  |  | Labtops; Marwa (Dev. Team) | 14h | 13.3h | 1,400 |  | 1,330 |
| 15 | 1.2.5 | CCB | milestone, manual | 0d | 2019-04-30 A | 2019-04-30 | 12 | 80% | 0d |  |  |  |  |  |  | Mariam N. (Dev. Team) |  |  |  |  |  |
| 16 | 1.2.6 | cm plan | manual | 1d | 2019-04-30 A | 2019-05-01 | 12 | 95% | 0.05d |  |  |  |  |  |  | Hossam (Dev. Team); Labtops; Maryam M. (Dev. Team) | 14h | 13.3h | 1,400 |  | 1,330 |
| 17 | 1.2.7 | Skill Matrix | milestone, manual | 0d | 2019-05-01 A | 2019-05-01 A | 16 | 100% |  |  |  |  |  |  |  | Aya Hamdy (PM); Labtops |  |  |  |  |  |
| 18 | 1.2.8 | Project Issues | milestone, manual | 0d | 2019-05-01 A | 2019-05-01 | 17 | 95% | 0d |  |  |  |  |  |  | Aya Hamdy (PM); Labtops; Mariam N. (Dev. Team) |  |  |  |  |  |
| 19 | 1.3 | **Analysis** |  | 4.57d | 2019-05-02 A | 2019-05-07 | 5 | 99% | 0d |  | 2019-05-01 | 2019-05-06 | 4d |  |  | Aya Hamdy (PM); Dina (Dev. Team); Hossam (Dev. Team); Mariam N. (Dev. Team); Marwa (Dev. Team); Maryam M. (Dev. Team) | 219.5h | 171.5h | 21,950 | 25,725 | 17,150 |
| 20 | 1.3.1 | Requirements Analysis | manual | 0.5d | 2019-05-02 A | 2019-05-02 A | 5 | 100% |  |  | 2019-05-01 | 2019-05-02 | 0.5d |  |  | Dina (Dev. Team) | 3.5h | 3.5h | 350 | 525 | 350 |
| 21 | 1.4 | **Design** |  | 2d | 2019-05-07 A | 2019-05-08 | 19 | 80% | 0.4d |  | 2019-05-07 | 2019-05-08 | 2d |  |  |  | 21h | 16.8h | 2,100 |  | 1,680 |
| 22 | 1.4.1 | High level design | milestone, manual | 0d | 2019-05-07 A | 2019-05-07 | 5 | 99% | 0d |  |  |  |  |  |  | Aya Hamdy (PM); Labtops; Software Tools |  |  |  |  |  |
| 23 | 1.4.2 | UseCase And Usecase discription | manual | 1d | 2019-05-07 A | 2019-05-07 | 5 | 90% | 0.1d |  |  |  |  |  |  | Labtops; Marwa (Dev. Team); Software Tools | 7h | 6.3h | 700 |  | 630 |
| 24 | 1.4.3 | ERD | manual | 1d | 2019-05-08 A | 2019-05-08 | 5 | 50% | 0.5d |  |  |  |  |  |  | Hossam (Dev. Team); Labtops; Software Tools | 7h | 3.5h | 700 |  | 350 |
| 25 | 1.4.4 | Class diagram | milestone, manual | 0d | 2019-05-07 A | 2019-05-07 | 5 | 90% | 0d |  |  |  |  |  |  | Labtops; Mariam N. (Dev. Team); Software Tools |  |  |  |  |  |
| 26 | 1.4.5 | DFD | milestone, manual | 0d | 2019-05-07 A | 2019-05-07 | 5 | 95% | 0d |  |  |  |  |  |  | Labtops; Maryam M. (Dev. Team); Software Tools; Dina (Dev. Team) |  |  |  |  |  |
| 27 | 1.4.6 | Wireframes | manual | 1d | 2019-05-07 A | 2019-05-07 A | 5 | 100% |  |  |  |  |  |  |  | Labtops; Maryam M. (Dev. Team); Software Tools | 7h | 7h | 700 |  | 700 |

| ID | WBS | Task | Type | Duration | Start | Finish | Predecessors | Complete | Remaining | Actual start | Baseline start | Baseline finish | Baseline duration | Total slack | Resources | Work | Actual work | Cost | Actual cost |
| --- | --- | --- | --- | --- | --- | --- | --- | --- | --- | --- | --- | --- | --- | --- | --- | --- | --- | --- | --- |
| 28 | 1.5 | **Implementation** |  | 8d | 2019-05-08 | 2019-05-17 | 21 | 71% | 2.35d | 2019-05-14 | 2019-05-08 | 2019-05-17 | 8d |  |  | 55.3h | 38.85h | 5,530 | 3,885 |
| 29 | 1.5.1 | Frontend offers and home page | manual | 1d | 2019-05-14 A | 2019-05-14 A | 27 | 100% |  |  |  |  |  |  | Labtops; Maryam M. (Dev. Team); Software Tools | 7h | 7h | 700 | 700 |
| 30 | 1.5.2 | Front end login and register page | manual | 1d | 2019-05-14 A | 2019-05-14 A | 27 | 100% |  |  |  |  |  |  | Labtops; Marwa (Dev. Team); Software Tools | 7h | 7h | 700 | 700 |
| 31 | 1.5.3 | Front end Add Menu page | manual | 1d | 2019-05-15 A | 2019-05-15 A | 27 | 100% |  |  |  |  |  |  | Aya Hamdy (PM); Labtops [90%]; Software Tools [90%] | 6.3h | 6.3h | 630 | 630 |
| 32 | 1.5.4 | View menu and delete user pages | manual | 1d | 2019-05-14 A | 2019-05-14 | 27 | 90% | 0.1d |  |  |  |  |  | Hossam (Dev. Team); Labtops; Software Tools | 7h | 6.3h | 700 | 630 |
| 33 | 1.5.5 | Admin and users profiles | manual | 1d | 2019-05-14 A | 2019-05-14 | 27 | 85% | 0.15d |  |  |  |  |  | Dina (Dev. Team); Labtops; Software Tools | 7h | 5.95h | 700 | 595 |
| 34 | 1.5.6 | Backend of all pages | manual | 3d | 2019-05-15 A | 2019-05-17 | 29, 30, 31, 32, 33 | 30% | 2.1d |  |  |  |  |  | Labtops; Mariam N. (Dev. Team); Software Tools | 21h | 6.3h | 2,100 | 630 |
| 35 | 1.6 | Testing | manual | 8d | 2019-04-27 A | 2019-05-17 | 28SS, 2SS, 5SS, 19SS, 21SS |  | 8d |  | 2019-04-27 | 2019-05-17 | 8d |  |  |  |  |  |  |
| 36 | 1.7 | Deployment | manual | 0.29d | 2019-05-17 | 2019-05-17 | 35 |  |  |  | 2019-05-17 | 2019-05-17 | 0.29d |  |  |  |  |  |  |
| 37 | 1.8 | closing | milestone | 0d | 2019-05-17 | 2019-05-17 | 36 |  |  |  | 2019-05-18 | 2019-05-18 |  | 0d |  |  |  |  |  |
